# HRSolutions "POC" SuccessFactors

Schedule from MS Project, 2015-08-31 to 2015-10-16, status date 2015-10-19, costs in R$, A marks actual dates.
DSI - NewTec

## Calendars

- Padrão: Mon-Fri 09:00-12:00, 13:00-18:00; Sat-Sun off. Exceptions (off unless hours are given): 2015-10-12 (Nossa Senhora da Aparecida).

## Resources

| Resource | Rate |
| --- | --- |
| Gerente de Projeto | 1 |
| Consultor HCM - PY | 1 |
| Consultor HCM - PA | 1 |
| Gerente Tecnico HCM | 1 |
| Consultor HCM - PY, Consultor HCM - PA | 1 |
| Desenvolvedor ABAP HCM | 1 |
| Funcional SAP HCM PA/PD | 1 |
| Arquiteto Soluções / Consultor SuccessFactors | 1 |
| Consultor SuccessFactors | 1 |
| Funcional SAP HCM | 1 |
| Funcional SAP HCM PY | 1 |
| Gestão Técnica HRSolutions | 1 |
| w | 1 |
| Arquiteto Soluções / Equipe BRF | 1 |

## Schedule

| ID | WBS | Task | Duration | Start | Finish | Predecessors | Complete | Actual start | Actual finish | Baseline start | Baseline finish | Baseline duration | Total slack | Constraint | Resources | Work | Actual work | Cost | Baseline cost | Actual cost | % Planejado | % Realizado |
| --- | --- | --- | --- | --- | --- | --- | --- | --- | --- | --- | --- | --- | --- | --- | --- | --- | --- | --- | --- | --- | --- | --- |
| 1 | 1 | **Preparação do Projeto (POC) Employee Central** | 5d | 2015-08-31 A | 2015-09-04 A |  | 100% |  |  | 2015-08-31 | 2015-09-04 | 5d |  |  |  | 40h | 40h | 40 | 40 | 40 | 100% | 100% |
| 2 | 1.1 | Definição e Preparação do Projecto | 3d | 2015-08-31 A | 2015-09-02 A |  | 100% |  |  | 2015-08-31 | 2015-09-02 | 3d |  | start no earlier than 2015-08-31 | Gerente de Projeto | 24h | 24h | 24 | 24 | 24 | 100% | 100% |
| 3 | 1.2 | KickOff | 1d | 2015-09-03 A | 2015-09-03 A | 2 | 100% |  |  | 2015-09-03 | 2015-09-03 | 1d |  |  | Gerente de Projeto | 8h | 8h | 8 | 8 | 8 | 100% | 100% |
| 4 | 1.3 | Cronograma Detalhado | 1d | 2015-09-04 A | 2015-09-04 A | 3 | 100% |  |  | 2015-09-04 | 2015-09-04 | 1d |  |  | Gerente de Projeto | 8h | 8h | 8 | 8 | 8 | 100% | 100% |
| 5 | 2 | **Análise e Desenho do Escopo** | 5d | 2015-09-11 | 2015-09-18 |  | 100% | 2015-09-07 | 2015-09-11 | 2015-09-11 | 2015-09-18 | 5d |  |  |  | 72h | 72h | 72 | 72 | 72 | 100% | 100% |
| 6 | 2.1 | Validar Cenários SAP HCM | 3d | 2015-09-07 A | 2015-09-09 A | 4 | 100% |  |  | 2015-09-07 | 2015-09-09 | 3d |  | start no earlier than 2015-09-07 | Funcional SAP HCM | 24h | 24h | 24 | 24 | 24 | 100% | 100% |
| 7 | 2.2 | Definir do WorkBook do EC | 2d | 2015-09-10 A | 2015-09-11 A | 6 | 100% |  |  | 2015-09-10 | 2015-09-11 | 2d |  | start no earlier than 2015-09-10 | Funcional SAP HCM | 16h | 16h | 16 | 16 | 16 | 100% | 100% |
| 8 | 2.3 | Criar mapeamentos PI | 2d | 2015-09-10 A | 2015-09-11 A | 6 | 100% |  |  | 2015-09-10 | 2015-09-11 | 2d |  | finish no earlier than 2015-09-11 | Funcional SAP HCM | 16h | 16h | 16 | 16 | 16 | 100% | 100% |
| 9 | 2.4 | Carregar Objetos SAP (Programa, Tabelas, Classes e etc.) | 2d | 2015-09-10 A | 2015-09-11 A | 6 | 100% |  |  | 2015-09-10 | 2015-09-11 | 2d |  | finish no earlier than 2015-09-11 | Funcional SAP HCM | 16h | 16h | 16 | 16 | 16 | 100% | 100% |
| 10 | 3 | **Realização da Parametrização e Desenvolvimentos** | 17d | 2015-09-14 A | 2015-10-06 A |  | 100% |  |  | 2015-09-14 | 2015-10-06 | 17d |  |  |  | 200h | 200h | 200 | 200 | 200 | 100% | 100% |
| 11 | 3.1 | Configurar Campos (Inf. Org., Inf. Pessoais, Form. Academica e etc.) | 5d | 2015-09-14 A | 2015-09-18 A | 9 | 100% |  |  | 2015-09-14 | 2015-09-18 | 5d |  |  | Arquiteto Soluções / Consultor SuccessFactors | 40h | 40h | 40 | 40 | 40 | 100% | 100% |
| 12 | 3.2 | Configurar Picklists | 1d | 2015-09-21 A | 2015-09-21 A | 11 | 100% |  |  | 2015-09-21 | 2015-09-21 | 1d |  |  | Arquiteto Soluções / Consultor SuccessFactors | 8h | 8h | 8 | 8 | 8 | 100% | 100% |
| 13 | 3.3 | Configurar Rubricas | 1d | 2015-09-21 A | 2015-09-21 A | 11 | 100% |  |  | 2015-09-21 | 2015-09-21 | 1d |  |  | Arquiteto Soluções / Consultor SuccessFactors | 8h | 8h | 8 | 8 | 8 | 100% | 100% |
| 14 | 3.4 | Configurar Tipos e Motivos de Medida | 3d | 2015-09-21 A | 2015-09-23 A | 11 | 100% |  |  | 2015-09-21 | 2015-09-23 | 3d |  |  | Arquiteto Soluções / Consultor SuccessFactors | 24h | 24h | 24 | 24 | 24 | 100% | 100% |
| 15 | 3.5 | Configurar WorkFlows | 2d | 2015-09-14 A | 2015-09-15 A | 9 | 100% |  |  | 2015-09-14 | 2015-09-15 | 2d |  |  | Arquiteto Soluções / Consultor SuccessFactors | 16h | 16h | 16 | 16 | 16 | 100% | 100% |
| 16 | 3.6 | Configurar Integração SAP - > EC | 5d | 2015-09-23 A | 2015-09-29 A | 9 | 100% |  |  | 2015-09-23 | 2015-09-29 | 5d |  |  | Arquiteto Soluções / Consultor SuccessFactors | 40h | 40h | 40 | 40 | 40 | 100% | 100% |
| 17 | 3.7 | Configurar Integração EC - > SAP | 5d | 2015-09-30 A | 2015-10-06 A | 16 | 100% |  |  | 2015-09-30 | 2015-10-06 | 5d |  |  | Arquiteto Soluções / Consultor SuccessFactors | 40h | 40h | 40 | 40 | 40 | 100% | 100% |
| 18 | 3.8 | Configurar Tema da Instancia (Cores, Logo, Página de Login e etc.) | 1d | 2015-09-14 A | 2015-09-14 A | 9 | 100% |  |  | 2015-09-14 | 2015-09-14 | 1d |  |  | Arquiteto Soluções / Consultor SuccessFactors | 8h | 8h | 8 | 8 | 8 | 100% | 100% |
| 19 | 3.9 | Configurar Perfis | 2d | 2015-09-24 A | 2015-09-25 A | 14 | 100% |  |  | 2015-09-24 | 2015-09-25 | 2d |  |  | Arquiteto Soluções / Consultor SuccessFactors | 16h | 16h | 16 | 16 | 16 | 100% | 100% |
| 20 | 4 | **Testes Finais e Validações de Cenários** | 3d | 2015-10-07 | 2015-10-09 |  |  |  |  | 2015-10-07 | 2015-10-09 | 3d | 0d |  |  | 56h |  | 56 | 56 |  | 100% | 0% |
| 21 | 4.1 | Testar Admissão (SAP- > EC) | 1d | 2015-10-07 | 2015-10-07 | 17 |  |  |  | 2015-10-07 | 2015-10-07 | 1d | 6d |  | Consultor SuccessFactors | 8h |  | 8 | 8 |  | 100% | 0% |
| 22 | 4.2 | Testar Demissão (SAP- > EC) | 1d | 2015-10-07 | 2015-10-07 | 17 |  |  |  | 2015-10-07 | 2015-10-07 | 1d | 6d |  | Consultor SuccessFactors | 8h |  | 8 | 8 |  | 100% | 0% |
| 23 | 4.3 | Testar Movimentação (SAP- > EC) | 1d | 2015-10-07 | 2015-10-07 | 17 |  |  |  | 2015-10-07 | 2015-10-07 | 1d | 0d |  | Consultor SuccessFactors | 8h |  | 8 | 8 |  | 100% | 0% |
| 24 | 4.4 | Testar Admissão (EC- > SAP) | 1d | 2015-10-08 | 2015-10-08 | 23 |  |  |  | 2015-10-08 | 2015-10-08 | 1d | 5d |  | Funcional SAP HCM | 8h |  | 8 | 8 |  | 100% | 0% |
| 25 | 4.5 | Testar Demissão (EC- > SAP) | 1d | 2015-10-08 | 2015-10-08 | 23 |  |  |  | 2015-10-08 | 2015-10-08 | 1d | 5d |  | Funcional SAP HCM | 8h |  | 8 | 8 |  | 100% | 0% |
| 26 | 4.6 | Testar Movimentação (EC- > SAP) | 1d | 2015-10-08 | 2015-10-08 | 23 |  |  |  | 2015-10-08 | 2015-10-08 | 1d | 0d |  | Funcional SAP HCM | 8h |  | 8 | 8 |  | 100% | 0% |
| 27 | 4.7 | Processar folha SAP HCM | 1d | 2015-10-09 | 2015-10-09 | 26 |  |  |  | 2015-10-09 | 2015-10-09 | 1d | 0d |  | Funcional SAP HCM PY | 8h |  | 8 | 8 |  | 100% | 0% |

| ID | WBS | Task | Duration | Start | Finish | Predecessors | Baseline start | Baseline finish | Baseline duration | Total slack | Resources | Work | Cost | Baseline cost | % Planejado | % Realizado |
| --- | --- | --- | --- | --- | --- | --- | --- | --- | --- | --- | --- | --- | --- | --- | --- | --- |
| 28 | 5 | **Equalização Pós-Refresh QAS** | 3d | 2015-10-13 | 2015-10-15 | 27 | 2015-10-13 | 2015-10-15 | 3d | 0d |  | 32h | 32 | 32 | 100% | 0% |
| 29 | 5.1 | Transporte de Request | 0.5d | 2015-10-13 | 2015-10-13 | 27 | 2015-10-13 | 2015-10-13 | 0.5d | 0d | Arquiteto Soluções / Equipe BRF | 4h | 4 | 4 | 100% | 0% |
| 30 | 5.2 | Configurações do ambiente | 0.5d | 2015-10-13 | 2015-10-13 | 29 | 2015-10-13 | 2015-10-13 | 0.5d | 0d | Arquiteto Soluções / Equipe BRF | 4h | 4 | 4 | 100% | 0% |
| 31 | 5.3 | Teste SAP -> EC | 1d | 2015-10-14 | 2015-10-14 | 30 | 2015-10-14 | 2015-10-14 | 1d | 2d | Consultor SuccessFactors | 8h | 8 | 8 | 100% | 0% |
| 32 | 5.4 | Teste EC -> SAP | 1d | 2015-10-14 | 2015-10-14 | 30 | 2015-10-14 | 2015-10-14 | 1d | 0d | Funcional SAP HCM | 8h | 8 | 8 | 100% | 0% |
| 33 | 5.5 | Teste folha SAP HCM | 1d | 2015-10-15 | 2015-10-15 | 32 | 2015-10-15 | 2015-10-15 | 1d | 0d | Funcional SAP HCM PY | 8h | 8 | 8 | 100% | 0% |
| 34 | 6 | **Apresentação da (POC) SuccessFactors EC** | 1d | 2015-10-16 | 2015-10-16 |  | 2015-10-16 | 2015-10-16 | 1d |  |  | 8h | 8 | 8 | 100% | 0% |
| 35 | 6.1 | Apresentação e validaçao dos cenarios da POC | 1d | 2015-10-16 | 2015-10-16 | 33 | 2015-10-16 | 2015-10-16 | 1d | 0d | Gestão Técnica HRSolutions | 8h | 8 | 8 | 100% | 0% |
